# UniConnect — Student Portal Consolidation

Schedule from MS Project XML, 2026-07-06 to 2027-03-11.
Southern Coast University (fictional)

## Calendars

- Standard: Mon-Fri 08:00-12:00, 13:00-17:00; Sat-Sun off.

## Resources

| Resource | Group | Rate |
| --- | --- | --- |
| Project Manager | SCU Digital Services | 120 |
| Business Analyst | SCU Digital Services | 95 |
| Solution Architect | SCU Digital Services | 140 |
| Developer | SCU Digital Services | 105 |
| Data Engineer | SCU Digital Services | 110 |
| Tester | SCU Digital Services | 85 |
| UX Designer | SCU Digital Services | 95 |
| Change & Training Lead | SCU Digital Services | 90 |
| Security Consultant | Contract | 160 |

## Schedule

| ID | WBS | Task | Type | Duration | Start | Finish | Predecessors | Resources | Work |
| --- | --- | --- | --- | --- | --- | --- | --- | --- | --- |
| 1 | 1.1 | [1.1] Initiation & charter |  | 10d | 2026-07-06 | 2026-07-17 |  | Project Manager; Business Analyst [50%] | 120h |
| 2 | M1 | [M1] Charter approved | milestone | 0d | 2026-07-17 | 2026-07-17 | 1 |  |  |
| 3 | 1.2 | [1.2] Planning & baselines |  | 8d | 2026-07-20 | 2026-07-29 | 2 | Project Manager; Business Analyst [50%]; Solution Architect [25%] | 112h |
| 4 | 1.3 | [1.3] Monitoring, control & CCB |  | 138d | 2026-07-30 | 2027-02-19 | 3 | Project Manager [50%]; Business Analyst [25%] | 828h |
| 5 | 1.4 | [1.4] Closure |  | 5d | 2027-03-05 | 2027-03-11 | 37, 4 | Project Manager; Business Analyst [50%] | 60h |
| 6 | M7 | [M7] Project closed | milestone | 0d | 2027-03-11 | 2027-03-11 | 5 |  |  |
| 7 | 2.1 | [2.1] Current-state portal audit |  | 10d | 2026-07-20 | 2026-07-31 | 2 | Business Analyst; Data Engineer [50%]; Solution Architect [25%] | 140h |
| 8 | 2.2 | [2.2] Requirements workshops |  | 10d | 2026-08-03 | 2026-08-14 | 7, 3 | Business Analyst; UX Designer [50%]; Project Manager [25%]; Change & Training Lead [25%] | 160h |
| 9 | 2.3 | [2.3] Solution & SSO architecture |  | 10d | 2026-08-17 | 2026-08-28 | 8 | Solution Architect; Security Consultant [25%]; Developer [50%] | 140h |
| 10 | 2.4 | [2.4] Privacy Impact Assessment |  | 10d | 2026-08-24 | 2026-09-04 | 9SS+5d | Business Analyst [50%]; Security Consultant [50%] | 80h |
| 11 | 2.5 | [2.5] UX & accessibility prototype |  | 15d | 2026-08-17 | 2026-09-04 | 8 | UX Designer; Developer [50%] | 180h |
| 12 | M2 | [M2] Design sign-off | milestone | 0d | 2026-09-04 | 2026-09-04 | 9, 10, 11 |  |  |
| 13 | 3.1 | [3.1] Sprint 1 SSO & dashboard |  | 10d | 2026-08-31 | 2026-09-11 | 9 | Developer [200%]; Tester; UX Designer [50%]; Business Analyst [25%] | 300h |
| 14 | 3.2 | [3.2] Sprint 2 Enrolment & timetable |  | 10d | 2026-09-14 | 2026-09-25 | 13, 12 | Developer [200%]; Tester; UX Designer [50%]; Business Analyst [25%] | 300h |
| 15 | 3.3 | [3.3] Sprint 3 Fees & payments |  | 10d | 2026-09-28 | 2026-10-12 | 14 | Developer [200%]; Tester; UX Designer [50%]; Business Analyst [25%] | 300h |
| 16 | 3.4 | [3.4] Sprint 4 Services & helpdesk |  | 10d | 2026-10-13 | 2026-10-26 | 15 | Developer [200%]; Tester; UX Designer [50%]; Business Analyst [25%] | 300h |
| 17 | 3.5 | [3.5] Integration APIs (SIS, LMS, Finance) |  | 20d | 2026-08-31 | 2026-09-25 | 9 | Developer; Solution Architect [50%] | 240h |
| 18 | 3.6 | [3.6] Content & notifications configuration |  | 10d | 2026-09-28 | 2026-10-12 | 14 | Business Analyst [50%]; Change & Training Lead [25%] | 60h |
| 19 | M3 | [M3] Build complete | milestone | 0d | 2026-10-26 | 2026-10-26 | 16, 17, 18 |  |  |
| 20 | 4.1 | [4.1] Data mapping & cleansing |  | 10d | 2026-08-31 | 2026-09-11 | 9 | Data Engineer; Business Analyst [50%] | 120h |
| 21 | 4.2 | [4.2] Migration scripts & trial migration 1 |  | 15d | 2026-09-14 | 2026-10-02 | 20 | Data Engineer; Tester [50%] | 180h |
| 22 | 4.3 | [4.3] Trial migration 2 & reconciliation |  | 20d | 2026-10-06 | 2026-11-02 | 21, 17 | Data Engineer; Tester [50%]; Business Analyst [25%]; Developer [50%] | 360h |
| 23 | M4 | [M4] Trial migration passed | milestone | 0d | 2026-11-02 | 2026-11-02 | 22 |  |  |
| 24 | 4.4 | [4.4] Final migration |  | 5d | 2027-01-07 | 2027-01-13 | 33 | Data Engineer; Solution Architect [50%]; Tester [50%] | 80h |
| 25 | 5.1 | [5.1] System integration testing |  | 15d | 2026-11-03 | 2026-11-23 | 19, 23 | Tester [150%]; Developer [150%] | 360h |
| 26 | 5.2 | [5.2] Security/penetration testing |  | 10d | 2026-10-27 | 2026-11-09 | 19 | Security Consultant; Developer [50%] | 120h |
| 27 | 5.3 | [5.3] WCAG 2.1 AA audit |  | 10d | 2026-10-20 | 2026-11-02 | 16FF+5d | UX Designer; Tester [50%] | 120h |
| 28 | 5.4 | [5.4] Load testing (enrolment peak) |  | 10d | 2026-11-10 | 2026-11-23 | 25SS+5d | Solution Architect [50%]; Developer [50%] | 80h |
| 29 | 5.5 | [5.5] User acceptance testing |  | 15d | 2026-11-24 | 2026-12-14 | 25 | Tester; Business Analyst; Change & Training Lead [50%] | 300h |
| 30 | 5.6 | [5.6] Regression & defect remediation |  | 8d | 2026-12-01 | 2026-12-10 | 29SS+5d | Developer [200%]; Tester [50%] | 160h |
| 31 | M5 | [M5] UAT sign-off | milestone | 0d | 2026-12-14 | 2026-12-14 | 29, 26, 27, 28, 30 |  |  |
| 32 | 6.1 | [6.1] Training & change comms |  | 20d | 2026-10-27 | 2026-11-23 | 19 | Change & Training Lead | 160h |
| 33 | 6.2 | [6.2] Faculty pilot |  | 10d | 2026-12-15 | 2027-01-06 | 31 | Change & Training Lead [50%]; Business Analyst [50%]; Developer | 160h |
| 34 | 6.3 | [6.3] Go-live cutover |  | 5d | 2027-01-14 | 2027-01-20 | 24, 32 | Solution Architect; Developer [200%]; Data Engineer [50%]; Project Manager [50%] | 160h |
| 35 | M6 | [M6] Go-live | milestone | 0d | 2027-01-20 | 2027-01-20 | 34 |  |  |
| 36 | 6.4 | [6.4] Hypercare |  | 20d | 2027-01-21 | 2027-02-18 | 35 | Developer [200%]; Change & Training Lead [50%]; Tester [50%] | 480h |
| 37 | 6.5 | [6.5] Legacy portal decommissioning |  | 10d | 2027-02-19 | 2027-03-04 | 36 | Solution Architect [50%]; Data Engineer [50%] | 80h |

Notes:
- 1: Business case review, charter, stakeholder identification; ends at M1.
- 2: Milestone M1
- 3: WBS, ProjectLibre schedule, cost baseline, risk register, comms plan, RACI.
- 4: Level-of-effort task from end of planning to end of hypercare.
- 5: Admin closure, contract closure, archive, benefits handover; ends at M7.
- 6: Milestone M7
- 7: Inventory of the four portals, features, data stores, pain points and early data profiling (R01).
- 8: Workshops with students, SRC, faculties, Registrar and Service Desk.
- 9: Target architecture, SSO/MFA design on the existing identity platform (R12), integration patterns.
- 10: APP-based PIA covering migration, masking, access logging and retention (R03).
- 11: Tested with students incl. Accessibility Services; WCAG 2.1 AA patterns (R08).
- 12: Milestone M2
- 13: Two-week sprint; SSO proof of concept retires R02/R12 uncertainty.
- 14: Two-week sprint; enrolment forms, timetable view.
- 15: Two-week sprint; invoices, payment gateway hand-off, Finance integration.
- 16: Two-week sprint; service requests, knowledge base, chatbot hand-off.
- 17: SIS, LMS and Finance APIs used by the portal and by trial migration 2 reconciliation.
- 18: Portal content, FAQs and email notification templates (push notifications excluded — CR-01).
- 19: Milestone M3
- 20: Mapping of four portal data stores to the target model; de-duplication rules (R01).
- 21: Scripts built and first full trial run on masked data; ISS-01 raised here.
- 22: Second trial using the integration APIs; Registrar signs reconciliation; ends at M4.
- 23: Milestone M4
- 24: Final production migration in the cutover window.
- 25: End-to-end tests across portal, SIS, LMS, Finance and migrated data.
- 26: External pen-test engagement ($25k fixed) + remediation verification.
- 27: Finishes 5 days after Sprint 4 (FF+5d link).
- 28: Starts 5 days after SIT starts (SS+5d link).
- 29: Students, Registrar and faculty staff execute UAT scripts; ends at M5.
- 30: Runs alongside UAT (SS+5d).
- 31: Milestone M5
- 32: Student guides, staff/Service Desk training, go-live comms ($8k materials).
- 33: Pilot with two faculties' summer-session students and staff.
- 34: Cutover runbook, production licences activated ($180k); ends at M6.
- 35: Milestone M6
- 36: Four weeks of heightened support, daily stand-ups with the Service Desk.
- 37: Retire three legacy portals and archive data per retention schedule.
